Schedule from MS Project, 2007-03-15 to 2007-08-09, 7 hours a day, A marks actual dates.
IDEALX

## Calendars

- Standard: Mon-Fri 09:00-12:00, 14:00-18:00; Sat-Sun off.

## Schedule

| ID | Task | Type | Duration | Start | Finish | Predecessors | Complete | Remaining | Total slack | Free slack | Constraint |
| --- | --- | --- | --- | --- | --- | --- | --- | --- | --- | --- | --- |
| 1 | Etude |  | 7d? | 2007-03-15 A | 2007-03-23 A |  | 100% |  |  |  | must start on 2007-03-15 |
| 2 | Preuve du concept |  | 7d | 2007-03-26 A | 2007-04-03 A | 1 | 100% |  |  |  | start no earlier than 2007-03-26 |
| 3 | Adaptation d'AEP pour la démo |  | 18d | 2007-04-04 A | 2007-04-27 A | 2 | 100% |  |  |  |  |
| 4 | Démo | milestone | 1d | 2007-05-22 | 2007-05-22 | 3 |  |  | 11d | 9d | start no earlier than 2007-05-22 |
| 5 | Etude et test d'un connecteur SOAP coté PKI |  | 21d | 2007-04-04 A | 2007-05-02 A | 2 | 100% |  |  |  |  |
| 6 | Code SOAP coté PKI |  | 10d | 2007-06-05 A | 2007-06-18 | 4 | 20% | 8d | 7d | 5d | start no earlier than 2007-06-05 |
| 7 | Migration d'AEP sur .NET |  | 15d | 2007-06-05 | 2007-06-25 | 4 |  |  | 2d | 0d | start no earlier than 2007-06-05 |
| 8 | Code SOAP coté client |  | 5d | 2007-06-26 | 2007-07-02 | 7, 6 |  |  | 2d | 0d | start no earlier than 2007-06-05 |
| 9 | Tests |  | 15d | 2007-07-03 | 2007-07-23 | 8 |  |  | 2d | 0d |  |
| 10 | Packaging |  | 5d | 2007-07-24 | 2007-07-30 | 9 |  |  | 2d | 0d |  |
| 11 | Mise en place de la démo |  | 5d | 2007-07-31 | 2007-08-06 | 10 |  |  | 2d | 0d |  |
| 12 | Release V1 | milestone | 1d? | 2007-08-07 | 2007-08-07 | 11 |  |  | 2d |  |  |
| 13 | Documentation |  | 99d | 2007-03-26 A | 2007-08-09 |  | 58% | 42d | 0d |  | start no earlier than 2007-03-26 |
