# Connecteur CMC

Schedule from GanttProject, 2007-03-15 to 2007-06-07.
IdealX

## Calendars

- Project calendar: Mon-Fri working; Sat-Sun off.

## Schedule

| ID | Task | Type | Duration | Start | Finish | Predecessors | Complete |
| --- | --- | --- | --- | --- | --- | --- | --- |
| 1 | Étude |  | 7d | 2007-03-15 | 2007-03-23 |  | 100% |
| 2 | Preuve du concept |  | 7d | 2007-03-26 | 2007-04-03 | 1 | 100% |
| 3 | Adaptation d'AEP pour la démo |  | 17d | 2007-04-04 | 2007-04-26 | 2 | 100% |
| 4 | Démo | milestone | 0d | 2007-04-27 | 2007-04-27 | 3 |  |
| 5 | Documentation |  | 26d | 2007-04-30 | 2007-06-04 | 4 |  |
| 6 | Etude et tests d'un connecteur SOAP coté PKI |  | 20d | 2007-04-04 | 2007-05-01 | 2 | 86% |
| 7 | Code SOAP coté client |  | 10d | 2007-05-02 | 2007-05-15 | 6 |  |
| 8 | Développement de l'autofill coté PKI |  | 20d | 2007-04-25 | 2007-05-22 |  | 11% |
| 9 | Tests |  | 5d | 2007-05-23 | 2007-05-29 | 7, 8 |  |
| 10 | Mise en place de la Démo V1 |  | 4d | 2007-05-30 | 2007-06-04 | 9 |  |
| 11 | Release V1 | milestone | 0d | 2007-06-05 | 2007-06-05 | 5, 10 |  |
| 12 | Préparation de la V2 |  | 2d | 2007-06-06 | 2007-06-07 | 11 |  |
